# Flying_Autonomous_Robot_Group_1

Schedule from MS Project, 2023-03-02 to 2024-01-26, costs in $.

## Calendars

- Standard: Mon-Fri 08:00-12:00, 13:00-17:00; Sat-Sun off. Exceptions (off unless hours are given): 2023-04-07 (Good Friday), 2023-05-22 (Victoria Day), 2023-07-01 (Canada Day), 2023-08-07 (Civic Holiday), 2023-09-04 (Labour Day), 2023-09-30 (National Day of Truth and Reconciliation), 2023-10-09 (Thanksgiving), 2023-11-11 (Remembrance Day), 2023-12-25 (Christmas Day), 2023-12-26 (Boxing Day), 2024-01-01 (New Year's Day).

## Resources

| Resource | Rate |
| --- | --- |
| Project Manager | 60 |
| SEO | 28.5 |
| Data Analyst | 29.75 |
| Senior Technical Lead | 45.25 |
| Junior Technical Lead | 35 |
| Agriculture engineer | 36.5 |
| Megatrons engineer | 61.5 |
| QA specialist 1 | 34.25 |
| Supply chain expert | 22 |
| AI Engineer | 51.3 |
| AI Developer | 49.5 |
| Algorithm developer | 66.25 |
| Security engineer | 62 |
| DevOps engineer | 50 |
| Machine Learning engineer | 40.7 |
| Robotics Scientist | 46 |
| QA specialist 2 | 34.25 |
| Business Administrator | 30 |
| Assistant Project Maneger | 27.5 |
| Junior Algorithm Develop | 40 |
| Penetration Tester | 42.5 |

## Schedule

| ID | WBS | Task | Type | Duration | Start | Finish | Predecessors | Total slack | Resources | Work | Cost |
| --- | --- | --- | --- | --- | --- | --- | --- | --- | --- | --- | --- |
| 1 | 1 | **Develop Flying Autonomous Robots** |  | 229d | 2023-03-02 | 2024-01-26 |  | 0d |  | 10017h | 419,634.95 |
| 2 | 1.1 | **Initiation** |  | 3d | 2023-03-02 | 2023-03-06 |  | 0d |  | 42.5h | 1,631.25 |
| 3 | 1.1.1 | Identify Stakeholders |  | 1d | 2023-03-02 | 2023-03-02 |  | 2d | Project Manager | 7.5h | 450 |
| 4 | 1.1.2 | Develop Project Charter |  | 2d | 2023-03-02 | 2023-03-03 |  | 0d | Business Administrator | 15h | 450 |
| 5 | 1.1.3 | Hold a kick-off meeting |  | 1d | 2023-03-06 | 2023-03-06 | 4 | 0d | Business Administrator; Project Manager; Assistant Project Maneger | 20h | 731.25 |
| 6 | 1.1.4 | Project Approval | milestone | 0d | 2023-03-06 | 2023-03-06 | 5 | 0d |  |  |  |
| 7 | 1.2 | **Planning** |  | 34d | 2023-03-07 | 2023-04-24 | 2 | 0d |  | 498h | 20,058.75 |
| 8 | 1.2.1 | Collect Requirements |  | 4d | 2023-03-07 | 2023-03-10 | 6 | 30d | Assistant Project Maneger | 30h | 825 |
| 9 | 1.2.2 | Plan scope management |  | 3d | 2023-03-07 | 2023-03-09 |  | 0d | Project Manager | 22.5h | 1,350 |
| 10 | 1.2.3 | Develop Scope Statement |  | 2d | 2023-03-10 | 2023-03-13 | 9 | 0d | Project Manager | 15h | 900 |
| 11 | 1.2.4 | Create WBS |  | 3d | 2023-03-14 | 2023-03-16 | 10 | 0d | Assistant Project Maneger | 22.5h | 618.75 |
| 12 | 1.2.5 | Define activities |  | 2d | 2023-03-17 | 2023-03-20 | 11 | 0d | Assistant Project Maneger | 15h | 412.5 |
| 13 | 1.2.6 | Sequence activities |  | 2d | 2023-03-21 | 2023-03-22 | 12 | 22d | Project Manager | 15h | 900 |
| 14 | 1.2.7 | Estimate activity duration |  | 3d | 2023-03-21 | 2023-03-23 | 12 | 0d | Assistant Project Maneger | 22.5h | 618.75 |
| 15 | 1.2.8 | Develop Schedule Management Plan |  | 4d | 2023-03-24 | 2023-03-29 | 14 | 0d | Assistant Project Maneger; Business Administrator; Project Manager | 90h | 3,525 |
| 16 | 1.2.9 | Develop a schedule |  | 3d | 2023-03-30 | 2023-04-03 | 15 | 0d | Assistant Project Maneger; Business Administrator | 45h | 1,293.75 |
| 17 | 1.2.10 | Develop a quality management plan |  | 2d | 2023-04-04 | 2023-04-05 | 16 | 0d | Assistant Project Maneger; Project Manager | 30h | 1,312.5 |
| 18 | 1.2.11 | Develop a resource management plan |  | 4d | 2023-04-06 | 2023-04-12 | 17 | 0d | Assistant Project Maneger; Project Manager | 60h | 2,625 |
| 19 | 1.2.12 | Plan cost management |  | 3d | 2023-04-13 | 2023-04-17 | 18, 17 | 0d | Business Administrator; Project Manager | 45h | 2,025 |
| 20 | 1.2.13 | Estimate costs |  | 2d | 2023-04-18 | 2023-04-19 | 19 | 3d | Business Administrator | 7.5h | 225 |
| 21 | 1.2.14 | Determine budget |  | 3d | 2023-04-18 | 2023-04-20 | 19 | 0d | Business Administrator; Project Manager | 33h | 1,665 |
| 22 | 1.2.15 | Plan risk management |  | 2d | 2023-04-21 | 2023-04-24 | 21 | 0d | Assistant Project Maneger; Business Administrator; Project Manager | 45h | 1,762.5 |
| 23 | 1.2.16 | Planning approved by the Manager | milestone | 0d | 2023-04-24 | 2023-04-24 | 22 | 0d |  |  |  |
| 24 | 1.3 | **Execution** |  | 191d | 2023-04-25 | 2024-01-25 | 7 | 0d |  | 4058.5h | 193,465.7 |
| 25 | 1.3.1 | Define the required parts of the robot |  | 6d | 2023-04-25 | 2023-05-02 |  | 0d | Megatrons engineer; Robotics Scientist; AI Engineer | 135h | 7,146 |
| 26 | 1.3.2 | Design a model of Robot |  | 7d | 2023-05-03 | 2023-05-11 | 25 | 0d | AI Developer; Megatrons engineer; Robotics Scientist | 157.5h | 8,242.5 |

| ID | WBS | Task | Duration | Start | Finish | Predecessors | Total slack | Resources | Work | Cost |
| --- | --- | --- | --- | --- | --- | --- | --- | --- | --- | --- |
| 27 | 1.3.3 | **Multiple Agricultural Tasks** | 75d | 2023-05-12 | 2023-08-28 | 26 | 0d |  | 1901h | 90,018.5 |
| 28 | 1.3.3.1 | Gather information from R&D team | 1d | 2023-05-12 | 2023-05-12 |  | 0d | Assistant Project Maneger; Senior Technical Lead | 14h | 509.25 |
| 29 | 1.3.3.2 | Identify tasks | 3d | 2023-05-15 | 2023-05-17 | 28 | 0d | Assistant Project Maneger; Project Manager; Senior Technical Lead; Supply chain expert | 84h | 3,249.75 |
| 30 | 1.3.3.3 | **Develop algorithms for each task** | 50d | 2023-05-18 | 2023-07-27 | 29 | 0d |  | 1350h | 68,838.75 |
| 31 | 1.3.3.3.1 | Develop AI Perception Algorithm | 10d | 2023-05-18 | 2023-06-01 |  | 0d | AI Engineer; AI Developer; Algorithm developer | 225h | 12,528.75 |
| 32 | 1.3.3.3.2 | Build Vision Algorithms | 10d | 2023-06-02 | 2023-06-15 | 31 | 0d | AI Engineer; AI Developer; Robotics Scientist; Algorithm developer | 300h | 15,978.75 |
| 33 | 1.3.3.3.3 | Create Maneuver Algorithms | 10d | 2023-06-16 | 2023-06-29 | 32 | 0d | Algorithm developer; Megatrons engineer; Robotics Scientist | 225h | 13,031.25 |
| 34 | 1.3.3.3.4 | Develop Balancing Algorithms | 10d | 2023-06-30 | 2023-07-13 | 33 | 0d | Algorithm developer; Assistant Project Maneger; Junior Technical Lead; Megatrons engineer | 300h | 14,268.75 |
| 35 | 1.3.3.3.5 | Build Harvesting Optimization System | 10d | 2023-07-14 | 2023-07-27 | 34 | 0d | Agriculture engineer; AI Engineer; Senior Technical Lead; Machine Learning engineer | 300h | 13,031.25 |
| 36 | 1.3.3.4 | Build database tables and schemas | 4d | 2023-07-28 | 2023-08-02 | 30 | 0d | AI Engineer; Assistant Project Maneger; Data Analyst | 90h | 3,256.5 |
| 37 | 1.3.3.5 | Create Data Structures, Functions and Iterative loops | 7d | 2023-08-03 | 2023-08-14 | 36 | 0d | AI Developer; Assistant Project Maneger; Data Analyst | 168h | 5,978 |
| 38 | 1.3.3.6 | Develop storage for tracking records | 6d | 2023-08-15 | 2023-08-22 | 37 | 0d | Assistant Project Maneger; Data Analyst; DevOps engineer | 135h | 4,826.25 |
| 39 | 1.3.3.7 | Build security system for records | 4d | 2023-08-23 | 2023-08-28 | 38 | 0d | Security engineer; DevOps engineer | 60h | 3,360 |
| 40 | 1.3.4 | **Picking multiple variety fruits** | 35d | 2023-08-29 | 2023-10-18 | 27 | 0d |  | 547h | 24,371.95 |
| 41 | 1.3.4.1 | Create a list of fruits | 3d | 2023-08-29 | 2023-08-31 |  | 0d | Agriculture engineer | 22h | 803 |
| 42 | 1.3.4.2 | Gather details of fruits | 3d | 2023-09-01 | 2023-09-06 | 41 | 0d | Agriculture engineer | 24h | 876 |
| 43 | 1.3.4.3 | Create an algorithm for picking process | 10d | 2023-09-07 | 2023-09-20 | 42 | 0d | Agriculture engineer; Algorithm developer | 148h | 7,603.5 |
| 44 | 1.3.4.4 | Implement algorithm for harvesting fruits | 3d | 2023-09-21 | 2023-09-25 | 43 | 0d | AI Developer; AI Engineer; Algorithm developer | 53h | 2,990.9 |
| 45 | 1.3.4.5 | Develop a system for real-time recording of fruits | 5d | 2023-09-26 | 2023-10-02 | 44 | 0d | AI Developer; AI Engineer; Data Analyst | 108h | 4,699.8 |
| 46 | 1.3.4.6 | Create database tables and schemas for harvesting records | 4d | 2023-10-03 | 2023-10-06 | 45 | 0d | AI Developer; Data Analyst | 57h | 2,248.75 |
| 47 | 1.3.4.7 | Develop a user interface to show fruit-picking records | 7d | 2023-10-10 | 2023-10-18 | 46 | 0d | AI Developer; Assistant Project Maneger; Junior Technical Lead | 135h | 5,150 |
| 48 | 1.3.5 | **Multi Orchard Design** | 26d | 2023-10-19 | 2023-11-23 | 40 | 0d |  | 430h | 22,026.25 |
| 49 | 1.3.5.1 | Gather data on types of orchard designs available from the R&D team | 1d | 2023-10-19 | 2023-10-19 |  | 0d | Senior Technical Lead | 7.5h | 339.38 |
| 50 | 1.3.5.2 | Assess available area and accommodate number of orchards | 3d | 2023-10-20 | 2023-10-24 | 49 | 0d | Agriculture engineer | 22.5h | 821.25 |
| 51 | 1.3.5.3 | Develop an algorithm for finding the similar cultivation process | 10d | 2023-10-25 | 2023-11-07 | 50 | 0d | AI Engineer; Algorithm developer; Agriculture engineer | 210h | 11,006.25 |
| 52 | 1.3.5.4 | Implement best orchard layout which maximizes yield and quality | 7d | 2023-11-08 | 2023-11-16 | 51 | 0d | Agriculture engineer; AI Developer | 100h | 4,300 |
| 53 | 1.3.5.5 | Develop a security algorithm for encrypting an algorithms data | 5d | 2023-11-17 | 2023-11-23 | 52 | 0d | Algorithm developer; DevOps engineer; Security engineer | 90h | 5,559.38 |

| ID | WBS | Task | Type | Duration | Start | Finish | Predecessors | Total slack | Resources | Work | Cost |
| --- | --- | --- | --- | --- | --- | --- | --- | --- | --- | --- | --- |
| 54 | 1.3.6 | **Multi-platform access** |  | 29d | 2023-11-24 | 2024-01-08 | 48 | 0d |  | 525h | 22,789 |
| 55 | 1.3.6.1 | Build wireframes for the interface of an application |  | 4d | 2023-11-24 | 2023-11-29 |  | 0d | AI Developer; Senior Technical Lead | 54h | 2,571 |
| 56 | 1.3.6.2 | Develop Mock-ups |  | 4d | 2023-11-30 | 2023-12-05 | 55 | 0d | AI Developer; Junior Technical Lead | 52h | 2,226 |
| 57 | 1.3.6.3 | Create a schema for the database |  | 3d | 2023-12-06 | 2023-12-08 | 56 | 0d | AI Developer; Data Analyst | 42h | 1,664.25 |
| 58 | 1.3.6.4 | Develop front-end from Mock-ups |  | 7d | 2023-12-11 | 2023-12-19 | 57 | 0d | AI Developer; Junior Technical Lead | 105h | 4,436.25 |
| 59 | 1.3.6.5 | Build backend with data analytics |  | 10d | 2023-12-20 | 2024-01-05 | 58 | 0d | AI Developer; AI Engineer; Data Analyst; Senior Technical Lead | 260h | 11,410 |
| 60 | 1.3.6.6 | Deploy the app to the cloud platform |  | 1d | 2024-01-08 | 2024-01-08 | 59 | 0d | Assistant Project Maneger; DevOps engineer; Senior Technical Lead | 12h | 481.5 |
| 61 | 1.3.7 | Implement algorithms to the robot's model |  | 10d | 2024-01-09 | 2024-01-22 | 54 | 0d | Algorithm developer; Machine Learning engineer; Megatrons engineer; Robotics Scientist | 300h | 16,083.75 |
| 62 | 1.3.8 | Test the product |  | 3d | 2024-01-23 | 2024-01-25 | 61 | 0d | Assistant Project Maneger; Project Manager; Senior Technical Lead | 63h | 2,787.75 |
| 63 | 1.3.9 | Stakeholders approve the product | milestone | 0d | 2024-01-25 | 2024-01-25 | 62 | 0d |  |  |  |
| 64 | 1.4 | **Monitoring & Controlling** |  | 191d | 2023-04-25 | 2024-01-25 | 24SS | 0d |  | 5391h | 203,355 |
| 65 | 1.4.1 | View all generated logs |  | 191d | 2023-04-25 | 2024-01-25 |  | 0d | QA specialist 1; QA specialist 2 | 350h | 11,987.5 |
| 66 | 1.4.2 | Identify potential issues with an algorithm |  | 191d | 2023-04-25 | 2024-01-25 |  | 0d | QA specialist 1; QA specialist 2; Junior Algorithm Develop | 800h | 29,987.5 |
| 67 | 1.4.3 | Monitor the process and accuracy of the algorithm |  | 191d | 2023-04-25 | 2024-01-25 |  | 0d | QA specialist 1; QA specialist 2; Junior Algorithm Develop | 800h | 29,987.5 |
| 68 | 1.4.4 | Monitor the performance of an algorithm |  | 191d | 2023-04-25 | 2024-01-25 |  | 0d | QA specialist 1; QA specialist 2; Junior Algorithm Develop | 800h | 29,987.5 |
| 69 | 1.4.5 | Integrate changes |  | 191d | 2023-04-25 | 2024-01-25 |  | 0d | QA specialist 1; QA specialist 2; DevOps engineer | 445h | 16,737.5 |
| 70 | 1.4.6 | Maintain security standards |  | 191d | 2023-04-25 | 2024-01-25 |  | 0d | QA specialist 1; QA specialist 2; Penetration Tester | 1496h | 60,692.5 |
| 71 | 1.4.7 | Correct the documentation according to the integreted changes |  | 191d | 2023-04-25 | 2024-01-25 |  | 0d | QA specialist 1; QA specialist 2 | 350h | 11,987.5 |
| 72 | 1.4.8 | All issues were solved and Documented |  | 191d | 2023-04-25 | 2024-01-25 |  | 0d | QA specialist 1; QA specialist 2 | 350h | 11,987.5 |
| 73 | 1.5 | **Closing** |  | 1d | 2024-01-26 | 2024-01-26 | 64, 24 | 0d |  | 27h | 1,124.25 |
| 74 | 1.5.1 | Close project |  | 1d | 2024-01-26 | 2024-01-26 |  | 0d | AI Developer; Assistant Project Maneger; Business Administrator; DevOps engineer; Project Manager; Security engineer; Senior Technical Lead; SEO; Supply chain expert | 27h | 1,124.25 |
| 75 | 1.5.2 | Project completed | milestone | 0d | 2024-01-26 | 2024-01-26 | 74FF | 0d |  |  |  |
